# GANTT

Schedule from MS Project, 2022-08-08 to 2022-10-04, A marks actual dates.

## Calendars

- Estándar: Mon-Fri 09:00-13:00, 15:00-19:00; Sat-Sun off.

## Resources

| Resource |
| --- |
| ANDERCODE |
| DESARROLLADOR1 |

## Schedule

| ID | WBS | Task | Type | Duration | Start | Finish | Predecessors | Complete | Remaining | Total slack | Resources | Work | Actual work |
| --- | --- | --- | --- | --- | --- | --- | --- | --- | --- | --- | --- | --- | --- |
| 1 | 1 | **Sistema de Compra y Venta** |  | 41.1d | 2022-08-08 09:00 A | 2022-10-04 09:48 |  | 63% | 15.31d |  |  | 312.8h | 194.8h |
| 2 | 1.1 | **Modelo** |  | 6.7d | 2022-08-08 09:00 A | 2022-08-16 16:36 |  | 85% | 1d | 34.4d |  | 49.6h | 41.6h |
| 3 | 1.1.1 | **Usuario** |  | 1d | 2022-08-08 09:00 A | 2022-08-08 19:00 A |  | 100% |  |  |  | 8h | 8h |
| 4 | 1.1.1.1 | Login |  | 0.2d | 2022-08-08 09:00 A | 2022-08-08 10:36 A |  | 100% |  |  | ANDERCODE | 1.6h | 1.6h |
| 5 | 1.1.1.2 | Cambio de Contreña |  | 0.3d | 2022-08-08 10:36 A | 2022-08-08 13:00 A | 4 | 100% |  |  | ANDERCODE | 2.4h | 2.4h |
| 6 | 1.1.1.3 | CRUD |  | 0.5d | 2022-08-08 15:00 A | 2022-08-08 19:00 A | 5 | 100% |  |  | ANDERCODE | 4h | 4h |
| 7 | 1.1.2 | **Categoria** |  | 0.5d | 2022-08-09 09:00 A | 2022-08-09 13:00 A |  | 100% |  |  |  | 4h | 4h |
| 8 | 1.1.2.1 | CRUD |  | 0.5d | 2022-08-09 09:00 A | 2022-08-09 13:00 A | 6 | 100% |  |  | ANDERCODE | 4h | 4h |
| 9 | 1.1.3 | **Producto** |  | 0.5d | 2022-08-09 15:00 A | 2022-08-09 19:00 A |  | 100% |  |  |  | 4h | 4h |
| 10 | 1.1.3.1 | CRUD |  | 0.5d | 2022-08-09 15:00 A | 2022-08-09 19:00 A | 8 | 100% |  |  | ANDERCODE | 4h | 4h |
| 11 | 1.1.4 | **Moneda** |  | 0.5d | 2022-08-10 09:00 A | 2022-08-10 13:00 A |  | 100% |  |  |  | 4h | 4h |
| 12 | 1.1.4.1 | CRUD |  | 0.5d | 2022-08-10 09:00 A | 2022-08-10 13:00 A | 10 | 100% |  |  | ANDERCODE | 4h | 4h |
| 13 | 1.1.5 | **Unidad de medida** |  | 0.5d | 2022-08-10 15:00 A | 2022-08-10 19:00 A |  | 100% |  |  |  | 4h | 4h |
| 14 | 1.1.5.1 | CRUD |  | 0.5d | 2022-08-10 15:00 A | 2022-08-10 19:00 A | 12 | 100% |  |  | ANDERCODE | 4h | 4h |
| 15 | 1.1.6 | **Cliente** |  | 0.5d | 2022-08-11 09:00 A | 2022-08-11 13:00 A |  | 100% |  |  |  | 4h | 4h |
| 16 | 1.1.6.1 | CRUD |  | 0.5d | 2022-08-11 09:00 A | 2022-08-11 13:00 A | 14 | 100% |  |  | ANDERCODE | 4h | 4h |
| 17 | 1.1.7 | **Proveedor** |  | 0.5d | 2022-08-11 15:00 A | 2022-08-11 19:00 A |  | 100% |  |  |  | 4h | 4h |
| 18 | 1.1.7.1 | CRUD |  | 0.5d | 2022-08-11 15:00 A | 2022-08-11 19:00 A | 16 | 100% |  |  | ANDERCODE | 4h | 4h |
| 19 | 1.1.8 | **Usuario** | inactive | 1.5d | 2022-08-12 09:00 | 2022-08-15 13:00 |  |  |  | 35.6d |  |  |  |
| 20 | 1.1.8.1 | CRUD | inactive | 1.5d | 2022-08-12 09:00 | 2022-08-15 13:00 | 18 |  |  | 35.6d |  |  |  |
| 21 | 1.1.9 | **Empresa** |  | 0.2d | 2022-08-12 09:00 A | 2022-08-12 10:36 A |  | 100% |  |  |  | 1.6h | 1.6h |
| 22 | 1.1.9.1 | CRUD |  | 0.2d | 2022-08-12 09:00 A | 2022-08-12 10:36 A | 20 | 100% |  |  | ANDERCODE | 1.6h | 1.6h |
| 23 | 1.1.10 | **Sucursal** |  | 0.2d | 2022-08-12 10:36 A | 2022-08-12 12:12 A |  | 100% |  |  |  | 1.6h | 1.6h |
| 24 | 1.1.10.1 | CRUD |  | 0.2d | 2022-08-12 10:36 A | 2022-08-12 12:12 A | 22 | 100% |  |  | ANDERCODE | 1.6h | 1.6h |

| ID | WBS | Task | Duration | Start | Finish | Predecessors | Complete | Remaining | Total slack | Free slack | Resources | Work | Actual work |
| --- | --- | --- | --- | --- | --- | --- | --- | --- | --- | --- | --- | --- | --- |
| 25 | 1.1.11 | **Compra** | 1d | 2022-08-12 12:12 A | 2022-08-15 12:12 A |  | 100% |  |  |  |  | 4h | 4h |
| 26 | 1.1.11.1 | CRUD | 0.2d | 2022-08-12 12:12 A | 2022-08-12 15:48 A | 24 | 100% |  |  |  | ANDERCODE | 1.6h | 1.6h |
| 27 | 1.1.11.2 | Agregar Producto | 0.3d | 2022-08-12 15:48 A | 2022-08-12 18:12 A | 26 | 100% |  |  |  | ANDERCODE | 2.4h | 2.4h |
| 28 | 1.1.11.3 | Listar Detalle de Compra | 0.5d | 2022-08-12 18:12 A | 2022-08-15 12:12 A | 27 | 100% |  |  |  |  |  |  |
| 29 | 1.1.12 | **Venta** | 1d | 2022-08-15 12:12 | 2022-08-16 12:12 |  |  |  | 34.7d |  |  | 8h |  |
| 30 | 1.1.12.1 | CRUD | 0.2d | 2022-08-15 12:12 | 2022-08-15 15:48 | 28 |  |  | 0.24d | 0d | ANDERCODE | 1.6h |  |
| 31 | 1.1.12.2 | Descontar Producto | 0.3d | 2022-08-15 15:48 | 2022-08-15 18:12 | 30 |  |  | 0.24d | 0d | ANDERCODE | 2.4h |  |
| 32 | 1.1.12.3 | Listar Detalle de Venta | 0.5d | 2022-08-15 18:12 | 2022-08-16 12:12 | 31 |  |  | 0.24d | 0d | ANDERCODE | 4h |  |
| 33 | 1.1.13 | **Rol** | 0.3d | 2022-08-16 12:12 A | 2022-08-16 16:36 A |  | 100% |  |  |  |  | 2.4h | 2.4h |
| 34 | 1.1.13.1 | CRUD | 0.3d | 2022-08-16 12:12 A | 2022-08-16 16:36 A | 32 | 100% |  |  |  | ANDERCODE | 2.4h | 2.4h |
| 35 | 1.2 | **Controllador** | 6.4d | 2022-08-16 16:36 A | 2022-08-25 09:48 |  | 84% | 1d | 28d |  |  | 51.2h | 43.2h |
| 36 | 1.2.1 | Usuario | 0.5d | 2022-08-16 16:36 A | 2022-08-17 10:36 A | 34 | 100% |  |  |  | ANDERCODE | 4h | 4h |
| 37 | 1.2.2 | Categoria | 0.5d | 2022-08-17 10:36 A | 2022-08-17 16:36 A | 36 | 100% |  |  |  | ANDERCODE | 4h | 4h |
| 38 | 1.2.3 | Producto | 0.5d | 2022-08-17 16:36 A | 2022-08-18 10:36 A | 37 | 100% |  |  |  | ANDERCODE | 4h | 4h |
| 39 | 1.2.4 | Moneda | 0.5d | 2022-08-18 10:36 A | 2022-08-18 16:36 A | 38 | 100% |  |  |  | ANDERCODE | 4h | 4h |
| 40 | 1.2.5 | Cliente | 0.2d | 2022-08-18 16:36 A | 2022-08-18 18:12 A | 39 | 100% |  |  |  | ANDERCODE | 1.6h | 1.6h |
| 41 | 1.2.6 | Proveedor | 0.5d | 2022-08-18 18:12 A | 2022-08-19 12:12 A | 40 | 100% |  |  |  | ANDERCODE | 4h | 4h |
| 42 | 1.2.7 | Usuario | 0.5d | 2022-08-19 12:12 A | 2022-08-19 18:12 A | 41 | 100% |  |  |  | ANDERCODE | 4h | 4h |
| 43 | 1.2.8 | Empresa | 0.5d | 2022-08-19 18:12 A | 2022-08-22 12:12 A | 42 | 100% |  |  |  | ANDERCODE | 4h | 4h |
| 44 | 1.2.9 | Sucursal | 0.2d | 2022-08-22 12:12 A | 2022-08-22 15:48 A | 43 | 100% |  |  |  | ANDERCODE | 1.6h | 1.6h |
| 45 | 1.2.10 | Compra | 1d | 2022-08-22 15:48 A | 2022-08-23 15:48 A | 44 | 100% |  |  |  | ANDERCODE | 8h | 8h |
| 46 | 1.2.11 | Venta | 1d | 2022-08-23 15:48 | 2022-08-24 15:48 | 45 |  |  | 27d | 0d | ANDERCODE | 8h |  |
| 47 | 1.2.12 | Rol | 0.5d | 2022-08-24 15:48 A | 2022-08-25 09:48 A | 46 | 100% |  |  |  | ANDERCODE | 4h | 4h |
| 48 | 1.3 | **Vistas** | 19.5d | 2022-08-25 09:48 A | 2022-09-21 15:48 |  | 71% | 5.75d | 8.5d |  |  | 156h | 110h |
| 49 | 1.3.1 | Ventana de Acceso | 0.5d | 2022-08-25 09:48 A | 2022-08-25 15:48 A | 47 | 100% |  |  |  | ANDERCODE | 4h | 4h |
| 50 | 1.3.2 | Ventana Home | 0.5d | 2022-08-25 15:48 A | 2022-08-26 09:48 | 49 | 70% | 0.15d | 27d |  | ANDERCODE | 4h | 2.8h |
| 51 | 1.3.3 | Mant. Categoria | 0.5d | 2022-08-26 09:48 A | 2022-08-26 15:48 A | 50 | 100% |  |  |  | ANDERCODE | 4h | 4h |
| 52 | 1.3.4 | Mant. Producto | 1d | 2022-08-26 15:48 A | 2022-08-29 15:48 | 51 | 90% | 0.1d | 25.5d |  | ANDERCODE | 8h | 7.2h |
| 53 | 1.3.5 | Mant. Moneda | 0.5d | 2022-08-29 15:48 A | 2022-08-30 09:48 A | 52 | 100% |  |  |  | ANDERCODE | 4h | 4h |
| 54 | 1.3.6 | Mant. Unidad de medida | 0.5d | 2022-08-30 09:48 A | 2022-08-30 15:48 A | 53 | 100% |  |  |  | ANDERCODE | 4h | 4h |
| 55 | 1.3.7 | Mant. Cliente | 1d | 2022-08-30 15:48 A | 2022-08-31 15:48 A | 54 | 100% |  |  |  | ANDERCODE | 8h | 8h |
| 56 | 1.3.8 | Mant. Proveedor | 1d | 2022-08-31 15:48 A | 2022-09-01 15:48 A | 55 | 100% |  |  |  | ANDERCODE | 8h | 8h |
| 57 | 1.3.9 | Mant. Usuario | 1.5d | 2022-09-01 15:48 A | 2022-09-05 09:48 A | 56 | 100% |  |  |  | ANDERCODE | 12h | 12h |
| 58 | 1.3.10 | Mant. Empresa | 0.5d | 2022-09-05 09:48 A | 2022-09-05 15:48 A | 57 | 100% |  |  |  | ANDERCODE | 4h | 4h |
| 59 | 1.3.11 | Proceso De compra | 3d | 2022-09-05 15:48 A | 2022-09-08 15:48 A | 58 | 100% |  |  |  | ANDERCODE | 24h | 24h |
| 60 | 1.3.12 | Vista de Compra | 1d | 2022-09-08 15:48 A | 2022-09-09 15:48 A | 59 | 100% |  |  |  | ANDERCODE | 8h | 8h |
| 61 | 1.3.13 | Proceso de Venta | 3d | 2022-09-09 15:48 | 2022-09-14 15:48 | 60 |  |  | 1.5d | 0d | ANDERCODE | 24h |  |
| 62 | 1.3.14 | Vista de Venta | 1d | 2022-09-14 15:48 | 2022-09-15 15:48 | 61 |  |  | 1.5d | 0d | ANDERCODE | 8h |  |
| 63 | 1.3.15 | Listado de Venta | 1.5d | 2022-09-15 15:48 | 2022-09-19 09:48 | 62 |  |  | 1.5d | 0d | ANDERCODE | 12h |  |
| 64 | 1.3.16 | Listado de Compra | 1.5d | 2022-09-19 09:48 A | 2022-09-20 15:48 A | 63 | 100% |  |  |  | ANDERCODE | 12h | 12h |
| 65 | 1.3.17 | Mant. Sucursal | 0.5d | 2022-09-20 15:48 A | 2022-09-21 09:48 A | 64 | 100% |  |  |  | ANDERCODE | 4h | 4h |
| 66 | 1.3.18 | Mant. Rol | 0.5d | 2022-09-21 09:48 A | 2022-09-21 15:48 A | 65 | 100% |  |  |  | ANDERCODE | 4h | 4h |
| 67 | 1.4 | Pruebas | 4d | 2022-09-21 15:48 | 2022-09-27 15:48 | 66 |  |  | 1.5d | 0d | ANDERCODE | 32h |  |
| 68 | 1.5 | Cambios o Correciones | 3d | 2022-09-27 15:48 | 2022-09-30 15:48 | 67 |  |  | 1.5d |  | ANDERCODE | 24h |  |
